# Galway Gadgets Ltd

Schedule from MS Project, 2015-03-30 to 2015-07-28, costs in €, A marks actual dates.

## Calendars

- Standard: Mon-Fri 08:00-12:00, 13:00-17:00; Sat-Sun off.

## Resources

| Resource | Rate | Cost per use |
| --- | --- | --- |
| Camera Operator1 | 15 |  |
| Film editor | 10 |  |
| Director | 15 |  |
| Editor | 31.25 |  |
| Programmer4 | 7.5 |  |
| Production Staff 2 | 17.5 |  |
| Sound Engineer | 55 |  |
| Project Manager | 10 |  |
| Video Equipment | 8.12 |  |
| Hire of Servers | 12.5 |  |
| Programmer3 | 7.5 |  |
| Programmer2 | 7.5 |  |
| Programmer1 | 7.5 |  |
| Production Staff 1 | 17.5 |  |
| Hiring of licensed software testing tools | 6.25 |  |
| Buying of Images/Sware for editing |  | 250 |
| Staff Budget |  |  |
| Miscellaneous Budget |  |  |
| Camera Operator 2 | 15 |  |

## Schedule

| ID | WBS | Task | Type | Duration | Start | Finish | Predecessors | Complete | Remaining | Baseline start | Baseline finish | Baseline duration | Total slack | Free slack | Resources | Work | Actual work | Cost | Baseline cost | Actual cost |
| --- | --- | --- | --- | --- | --- | --- | --- | --- | --- | --- | --- | --- | --- | --- | --- | --- | --- | --- | --- | --- |
| 1 | 1 | **Pre-Production** |  | 23d | 2015-03-30 A | 2015-04-29 |  | 25% | 17.25d | 2015-03-30 | 2015-04-28 | 22d | 64d |  |  | 448h | 96h | 10,700 | 10,020 | 1,440 |
| 2 | 1.1 | Review script |  | 4d | 2015-03-30 | 2015-04-02 |  |  |  | 2015-03-30 | 2015-04-02 | 4d | 83d |  | Director [50%]; Sound Engineer; Project Manager | 80h |  | 2,320 | 2,320 |  |
| 3 | 1.2 | Develop script breakdown and schedule |  | 3d | 2015-04-03 A | 2015-04-07 A | 2 | 100% |  | 2015-04-03 | 2015-04-07 | 3d |  |  | Director [50%]; Project Manager | 36h | 36h | 420 | 420 | 420 |
| 4 | 1.3 | **Develop production boards** |  | 5d | 2015-04-08 | 2015-04-14 | 3 |  |  | 2015-04-08 | 2015-04-14 | 5d | 68d |  |  | 100h |  | 1,700 | 1,700 |  |
| 5 | 1.3.1 | Research requirements |  | 1d | 2015-04-08 | 2015-04-08 | 3 |  |  | 2015-04-08 | 2015-04-08 | 1d | 68d | 0d | Production Staff 1; Production Staff 2; Director [50%] | 20h |  | 340 | 340 |  |
| 6 | 1.3.2 | Development of production board |  | 3d | 2015-04-09 | 2015-04-13 | 5 |  |  | 2015-04-09 | 2015-04-13 | 3d | 68d | 0d | Production Staff 2; Production Staff 1; Director [50%] | 60h |  | 1,020 | 1,020 |  |
| 7 | 1.3.3 | Final review |  | 1d | 2015-04-14 | 2015-04-14 | 6 |  |  | 2015-04-14 | 2015-04-14 | 1d | 68d | 0d | Production Staff 1; Director [50%]; Production Staff 2 | 20h |  | 340 | 340 |  |
| 8 | 1.4 | Scout locations |  | 1w | 2015-04-15 | 2015-04-21 | 7 |  |  | 2015-04-15 | 2015-04-21 | 1w | 68d | 0d | Sound Engineer; Production Staff 2; Director [50%] | 100h |  | 3,200 | 3,200 |  |
| 9 | 1.5 | Select locations |  | 2d | 2015-04-22 | 2015-04-23 | 8FS-3d |  |  | 2015-04-22 | 2015-04-23 | 2d | 68d |  | Sound Engineer; Director [50%] | 24h |  | 1,000 | 1,000 |  |
| 10 | 1.6 | Apply for filming permits |  | 3d | 2015-04-24 A | 2015-04-28 A | 9 | 100% |  | 2015-04-24 | 2015-04-24 | 1d |  |  | Production Staff 1; Production Staff 2; Director [50%] | 60h | 60h | 1,020 | 340 | 1,020 |
| 11 | 1.7 | Reserve camera equipment |  | 1d | 2015-04-29 | 2015-04-29 | 10 |  |  | 2015-04-27 | 2015-04-27 | 1d | 0d |  | Camera Operator1; Camera Operator 2; Film editor | 24h |  | 320 | 320 |  |
| 12 | 1.8 | Reserve sound equipment |  | 1d | 2015-04-29 | 2015-04-29 | 11FF |  |  | 2015-04-28 | 2015-04-28 | 1d | 0d |  | Production Staff 1; Sound Engineer; Production Staff 2 | 24h |  | 720 | 720 |  |
| 13 | 1.9 | Pre-Production complete! | milestone | 0d | 2015-04-29 | 2015-04-29 | 12 |  |  | 2015-04-28 | 2015-04-28 | 0d | 0d |  |  |  |  |  |  |  |
| 14 | 2 | **Production** |  | 16d | 2015-04-30 | 2015-05-21 | 13 |  |  | 2015-04-29 | 2015-05-29 | 23d | 0d |  |  | 564h |  | 11,575 | 13,875 |  |
| 15 | 2.1 | Set up Film Set |  | 2d | 2015-04-30 | 2015-05-01 | 13 |  |  | 2015-04-29 | 2015-05-01 | 3d | 0d |  | Production Staff 1; Production Staff 2; Sound Engineer; Video Equipment; Camera Operator 2; Camera Operator1 | 96h |  | 2,050 | 2,355 |  |
| 16 | 2.2 | **Filming** |  | 14d | 2015-05-04 | 2015-05-21 | 15 |  |  | 2015-05-04 | 2015-05-29 | 20d | 0d |  |  | 468h |  | 9,525 | 11,520 |  |
| 17 | 2.2.1 | **Shooting** |  | 7d | 2015-05-04 | 2015-05-12 | 15 |  |  | 2015-05-04 | 2015-05-13 | 8d | 0d |  |  | 308h |  | 4,515 | 5,160 |  |
| 18 | 2.2.1.1 | Pratice scenes |  | 1d | 2015-05-04 | 2015-05-04 | 15 |  |  | 2015-05-04 | 2015-05-04 | 1d | 0d |  | Camera Operator1; Director [50%]; Production Staff 1; Video Equipment; Camera Operator 2; Production Staff 2 | 44h |  | 645 | 645 |  |
| 19 | 2.2.1.2 | Extra scenes |  | 2d | 2015-05-05 | 2015-05-06 | 18 |  |  | 2015-05-05 | 2015-05-06 | 2d | 0d |  | Production Staff 2; Camera Operator 2; Director [50%]; Video Equipment; Camera Operator1; Production Staff 1 | 88h |  | 1,290 | 1,290 |  |
| 20 | 2.2.1.3 | Main scenes |  | 4d | 2015-05-07 | 2015-05-12 | 19 |  |  | 2015-05-07 | 2015-05-13 | 1w | 0d |  | Camera Operator1; Director [50%]; Camera Operator 2; Production Staff 1; Production Staff 2; Video Equipment | 176h |  | 2,580 | 3,225 |  |
| 21 | 2.2.2 | **Editing Video** |  | 7d | 2015-05-13 | 2015-05-21 | 20 |  |  | 2015-05-14 | 2015-05-29 | 12d | 0d |  |  | 160h |  | 5,010 | 6,360 |  |
| 22 | 2.2.2.1 | Review scenes |  | 1d | 2015-05-13 | 2015-05-13 | 20 |  |  | 2015-05-14 | 2015-05-14 | 1d | 0d |  | Film editor; Sound Engineer; Director [50%] | 20h |  | 580 | 580 |  |
| 23 | 2.2.2.2 | Video & sound effect editing |  | 5d | 2015-05-14 | 2015-05-20 | 22 |  |  | 2015-05-15 | 2015-05-28 | 2w | 0d |  | Film editor; Sound Engineer; Editor | 120h |  | 3,850 | 5,200 |  |
| 24 | 2.2.2.3 | Final review of film |  | 1d | 2015-05-21 | 2015-05-21 | 23 |  |  | 2015-05-29 | 2015-05-29 | 1d | 0d |  | Director [50%]; Film editor; Sound Engineer | 20h |  | 580 | 580 |  |
| 25 | 2.3 | Production & Filming complete | milestone | 0d | 2015-05-21 | 2015-05-21 | 24 |  |  | 2015-05-29 | 2015-05-29 | 0d | 0d |  |  |  |  |  |  |  |

Notes:
- 8: The staff were over worked
- 9: The staff were over worked
- 10: The staff were over worked. The task also took two days longer to finish
- 15: Added resources to reduce task duration by 1 day.
- 23: Reduced the duration by adding more resources

| ID | WBS | Task | Type | Duration | Start | Finish | Predecessors | Complete | Remaining | Baseline start | Baseline finish | Baseline duration | Total slack | Resources | Work | Actual work | Cost | Baseline cost | Actual cost |
| --- | --- | --- | --- | --- | --- | --- | --- | --- | --- | --- | --- | --- | --- | --- | --- | --- | --- | --- | --- |
| 26 | 3 | **Web site Design** |  | 32d | 2015-05-22 A | 2015-07-06 | 25 | 68% | 10.29d | 2015-06-01 | 2015-07-02 | 24d | 0d |  | 852h | 644h | 8,155 | 7,085 | 5,550 |
| 27 | 3.1 | **Take Photos** |  | 4d | 2015-05-22 | 2015-05-27 | 25, 14SS |  |  | 2015-06-01 | 2015-06-04 | 4d | 0d |  | 48h |  | 1,205 | 1,205 |  |
| 28 | 3.1.1 | Photo shoot |  | 1d | 2015-05-22 | 2015-05-22 | 25 |  |  | 2015-06-01 | 2015-06-01 | 1d | 0d | Camera Operator1; Director [50%]; Camera Operator 2; Production Staff 1; Production Staff 2 | 36h |  | 580 | 580 |  |
| 29 | 3.1.2 | Photoshop |  | 3d | 2015-05-25 | 2015-05-27 | 28 |  |  | 2015-06-02 | 2015-06-04 | 3d | 0d | Editor [50%]; Buying of Images/Sware for editing | 12h |  | 625 | 625 |  |
| 30 | 3.2 | **Programming of website** |  | 19d | 2015-06-03 A | 2015-06-29 A | 29FS+4d | 100% |  | 2015-06-05 | 2015-06-25 | 15d |  |  | 644h | 644h | 5,550 | 4,480 | 5,550 |
| 31 | 3.2.1 | Tasks broken into user storys and assigned |  | 2d | 2015-06-03 A | 2015-06-04 A | 29 | 100% |  | 2015-06-05 | 2015-06-05 | 1d |  | Programmer1; Project Manager | 32h | 32h | 280 | 140 | 280 |
| 32 | 3.2.2 | Server configuration |  | 2d | 2015-06-05 A | 2015-06-08 A | 31 | 100% |  | 2015-06-08 | 2015-06-08 | 1d |  | Programmer2; Hire of Servers; Programmer1; Programmer3; Programmer4 [50%] | 72h | 72h | 620 | 310 | 620 |
| 33 | 3.2.3 | Develop website |  | 2w | 2015-06-09 A | 2015-06-22 A | 32 | 100% |  | 2015-06-09 | 2015-06-22 | 2w |  | Programmer4 [50%]; Programmer3; Hire of Servers; Programmer1; Programmer2 | 360h | 360h | 3,100 | 3,100 | 3,100 |
| 34 | 3.2.4 | Website security |  | 5d | 2015-06-23 A | 2015-06-29 A | 33 | 100% |  | 2015-06-23 | 2015-06-25 | 3d |  | Programmer3; Programmer4 [50%]; Hire of Servers; Programmer1; Programmer2 | 180h | 180h | 1,550 | 930 | 1,550 |
| 35 | 3.3 | useability & design |  | 1w | 2015-06-29 | 2015-07-06 | 34 |  |  | 2015-06-25 | 2015-07-02 | 1w | 0d | Hire of Servers; Programmer4 [50%]; Programmer1; Programmer2; Programmer3 | 160h |  | 1,400 | 1,400 |  |
| 36 | 3.4 | website launch | milestone | 0d | 2015-07-06 | 2015-07-06 | 35 |  |  | 2015-07-02 | 2015-07-02 | 0d | 0d |  |  |  |  |  |  |
| 37 | 4 | **testing** |  | 5d | 2015-07-07 | 2015-07-13 | 36 |  |  | 2015-07-03 | 2015-07-09 | 5d | 0d |  | 180h |  | 1,300 | 1,300 |  |
| 38 | 4.1 | task1 |  | 2d | 2015-07-07 | 2015-07-08 | 36 |  |  | 2015-07-03 | 2015-07-06 | 2d | 0d | Programmer1; Hiring of licensed software testing tools; Programmer2; Programmer3; Programmer4 [50%] | 72h |  | 520 | 520 |  |
| 39 | 4.2 | task2 |  | 2d | 2015-07-09 | 2015-07-10 | 38 |  |  | 2015-07-07 | 2015-07-08 | 2d | 0d | Programmer2; Hiring of licensed software testing tools; Programmer1; Programmer3; Programmer4 [50%] | 72h |  | 520 | 520 |  |
| 40 | 4.3 | task3 |  | 1d | 2015-07-13 | 2015-07-13 | 39 |  |  | 2015-07-09 | 2015-07-09 | 1d | 0d | Programmer3; Hiring of licensed software testing tools; Programmer1; Programmer2; Programmer4 [50%] | 36h |  | 260 | 260 |  |
| 41 | 4.4 | Final project hand-off | milestone | 0d | 2015-07-13 | 2015-07-13 | 40 |  |  | 2015-07-09 | 2015-07-09 | 0d | 0d |  |  |  |  |  |  |
| 42 | 5 | **Presentation** |  | 1d | 2015-07-20 | 2015-07-20 | 41 |  |  | 2015-07-16 | 2015-07-16 | 1d | 0d |  | 16h |  | 140 | 140 |  |
| 43 | 5.1 | Final presentation |  | 1d | 2015-07-20 | 2015-07-20 | 41FS+4d |  |  | 2015-07-16 | 2015-07-16 | 1d | 0d | Project Manager; Programmer1 | 16h |  | 140 | 140 |  |
| 44 | 6 | **Training** |  | 6d | 2015-07-21 | 2015-07-28 | 43 |  |  | 2015-07-17 | 2015-07-24 | 6d | 0d |  | 120h |  | 1,020 | 1,020 |  |
| 45 | 6.1 | Presentation of Website |  | 2d | 2015-07-21 | 2015-07-22 | 43 |  |  | 2015-07-17 | 2015-07-20 | 2d | 0d | Programmer1; Project Manager | 32h |  | 280 | 280 |  |
| 46 | 6.2 | Training |  | 3d | 2015-07-23 | 2015-07-27 | 45 |  |  | 2015-07-21 | 2015-07-23 | 3d | 0d | Programmer1; Project Manager; Programmer2 | 72h |  | 600 | 600 |  |
| 47 | 6.3 | Final handover |  | 1d | 2015-07-28 | 2015-07-28 | 46 |  |  | 2015-07-24 | 2015-07-24 | 1d | 0d | Programmer1; Project Manager | 16h |  | 140 | 140 |  |
